# 福莱特自研MES项目-南通推广

Schedule from a web Gantt chart, 2025-11-18 to 2027-05-10.
Saturdays and Sundays are off

## Schedule

| ID | WBS | Task | Duration | Start | Finish | Complete | Status | inPeople |
| --- | --- | --- | --- | --- | --- | --- | --- | --- |
| 2 | 1 | 项目启动会 | 1d | 2025-11-18 | 2025-11-18 | 100% | done |  |
| 3 | 2 | 开发方案内部沟通 | 4d | 2026-01-27 | 2026-01-30 | 100% | done |  |
| 4 | 3 | **系统开发** | 84d | 2026-03-03 | 2026-06-26 | 100% |  |  |
| 5 | 3.1 | **建表** | 57d | 2026-03-03 | 2026-05-20 | 100% | done |  |
| 6 | 3.1.1 | 系统建表 | 9d | 2026-03-03 | 2026-03-13 | 100% | done | 伍良近 |
| 7 | 3.1.2 | 品质填报建表 | 3d | 2026-05-18 | 2026-05-20 | 100% | done |  |
| 8 | 3.2 | **开发** | 74d | 2026-03-17 | 2026-06-26 | 100% | done |  |
| 9 | 3.2.1 | 技术架构 | 33d | 2026-03-17 | 2026-04-30 | 100% | done | 伍良近 |
| 10 | 3.2.2 | 基础数据 | 50d | 2026-03-24 | 2026-06-01 | 100% | done | 李艺琴 |
| 11 | 3.2.3 | 销售订单管理 | 50d | 2026-03-24 | 2026-06-01 | 100% | done | 张锐瑶 |
| 12 | 3.2.4 | 计划管理 | 15d | 2026-03-24 | 2026-04-13 | 100% | done | 李阳 |
| 13 | 3.2.5 | 生产管理 | 49d | 2026-03-24 | 2026-05-29 | 100% | done | 金李斌 |
| 14 | 3.2.6 | 生产填报 | 18d | 2026-05-06 | 2026-05-29 | 100% | done | 金李斌 |
| 15 | 3.2.7 | 品质管理 | 45d | 2026-03-30 | 2026-05-29 | 100% | done | 陶宇超 |
| 16 | 3.2.8 | 品质填报 | 15d | 2026-05-25 | 2026-06-12 | 100% | done |  |
| 17 | 3.2.9 | 生产结果 | 49d | 2026-03-24 | 2026-05-29 | 100% | done | 杨加丰 |
| 18 | 3.2.10 | 推送清单 | 35d | 2026-04-13 | 2026-05-29 | 100% | done | 杨加丰 |
| 19 | 3.2.11 | 库存管理 | 35d | 2026-04-13 | 2026-05-29 | 100% | done | 李阳 |
| 20 | 3.2.12 | 开发集成测试 | 20d | 2026-06-01 | 2026-06-26 | 100% | done |  |
| 21 | 4 | **UAT测试** | 35d | 2026-06-29 | 2026-08-14 | 70% | waiting |  |
| 22 | 4.1 | 单元模块、系统内测 | 35d | 2026-06-29 | 2026-08-14 | 70% | waiting |  |
| 23 | 4.2 | UAT问题跟进处理 | 35d | 2026-06-29 | 2026-08-14 | 70% | waiting |  |
| 24 | 5 | **培训** | 10d | 2026-08-17 | 2026-08-28 |  | waiting |  |
| 25 | 5.1 | 培训材料编写 | 5d | 2026-08-17 | 2026-08-21 |  | waiting |  |
| 26 | 5.2 | 系统动员会 | 1d | 2026-08-21 | 2026-08-21 |  | waiting |  |
| 27 | 5.3 | 系统培训 | 5d | 2026-08-24 | 2026-08-28 |  | waiting |  |

| ID | WBS | Task | Duration | Start | Finish | Predecessors | Status |
| --- | --- | --- | --- | --- | --- | --- | --- |
| 28 | 6 | **系统试运行** | 20d | 2026-08-17 | 2026-09-11 |  | waiting |
| 29 | 6.1 | 现场设备硬件确认 | 5d | 2026-08-24 | 2026-08-28 |  | waiting |
| 30 | 6.2 | 试运行环境搭建 | 5d | 2026-08-17 | 2026-08-21 |  | waiting |
| 31 | 6.3 | 试运行数据准备 | 10d | 2026-08-17 | 2026-08-28 |  | waiting |
| 32 | 6.4 | 系统试运行 | 10d | 2026-08-31 | 2026-09-11 |  | waiting |
| 33 | 6.5 | 功能优化 | 10d | 2026-08-31 | 2026-09-11 |  | waiting |
| 34 | 7 | **系统上线** | 40d | 2026-08-31 | 2026-10-23 |  | waiting |
| 35 | 7.1 | 正式环境部署 | 5d | 2026-08-31 | 2026-09-04 |  | waiting |
| 36 | 7.2 | 正式环境数据准备 | 5d | 2026-09-07 | 2026-09-11 | 35 | waiting |
| 37 | 7.3 | 正式上线 | 15d | 2026-09-14 | 2026-10-02 | 32 | waiting |
| 38 | 7.4 | 验收签字 | 15d | 2026-10-05 | 2026-10-23 | 37 | waiting |
| 39 | 8 | **南通** | 85d | 2026-09-21 | 2027-01-15 |  | waiting |
| 40 | 8.1 | 南通设备准备 | 35d | 2026-09-21 | 2026-11-06 |  | waiting |
| 41 | 8.2 | **系统试运行** | 30d | 2026-11-09 | 2026-12-18 |  | waiting |
| 42 | 8.2.1 | 现场设备硬件确认 | 5d | 2026-11-09 | 2026-11-13 |  | waiting |
| 43 | 8.2.2 | 试运行环境搭建 | 5d | 2026-11-09 | 2026-11-13 |  | waiting |
| 44 | 8.2.3 | 试运行数据准备 | 10d | 2026-11-09 | 2026-11-20 |  | waiting |
| 45 | 8.2.4 | 系统动员会 | 1d | 2026-11-20 | 2026-11-20 |  | waiting |
| 46 | 8.2.5 | 系统培训 | 5d | 2026-11-23 | 2026-11-27 | 44 | waiting |
| 47 | 8.2.6 | 系统试运行 | 15d | 2026-11-30 | 2026-12-18 | 46 | waiting |
| 48 | 8.2.7 | 系统针对性优化 | 15d | 2026-11-30 | 2026-12-18 |  | waiting |
| 49 | 8.3 | **正式上线** | 30d | 2026-12-07 | 2027-01-15 |  | waiting |
| 50 | 8.3.1 | 正式环境部署 | 5d | 2026-12-07 | 2026-12-11 |  | waiting |
| 51 | 8.3.2 | 正式环境数据准备 | 5d | 2026-12-14 | 2026-12-18 | 50 | waiting |
| 52 | 8.3.3 | 系统正式上线 | 20d | 2026-12-21 | 2027-01-15 | 47, 51 | waiting |

| ID | WBS | Task | Duration | Start | Finish | Predecessors | Status |
| --- | --- | --- | --- | --- | --- | --- | --- |
| 53 | 9 | **安福三期** | 75d | 2026-11-23 | 2027-03-05 |  | waiting |
| 54 | 9.1 | 三期设备准备 | 30d | 2026-11-23 | 2027-01-01 |  | waiting |
| 55 | 9.2 | **系统试运行** | 30d | 2027-01-04 | 2027-02-12 |  | waiting |
| 56 | 9.2.1 | 现场设备硬件确认 | 5d | 2027-01-04 | 2027-01-08 |  | waiting |
| 57 | 9.2.2 | 试运行环境搭建 | 5d | 2027-01-04 | 2027-01-08 |  | waiting |
| 58 | 9.2.3 | 试运行数据准备 | 5d | 2027-01-11 | 2027-01-15 | 57 | waiting |
| 59 | 9.2.4 | 系统动员会 | 1d | 2027-01-08 | 2027-01-08 |  | waiting |
| 60 | 9.2.5 | 系统培训 | 5d | 2027-01-11 | 2027-01-15 |  | waiting |
| 61 | 9.2.6 | 系统试运行 | 20d | 2027-01-18 | 2027-02-12 | 58, 60 | waiting |
| 62 | 9.2.7 | 系统针对性优化 | 20d | 2027-01-18 | 2027-02-12 |  | waiting |
| 63 | 9.3 | **系统正式上线** | 30d | 2027-01-25 | 2027-03-05 |  | waiting |
| 64 | 9.3.1 | 正式环境部署 | 5d | 2027-01-25 | 2027-01-29 |  | waiting |
| 65 | 9.3.2 | 正式环境数据准备 | 5d | 2027-02-01 | 2027-02-05 | 64 | waiting |
| 66 | 9.3.3 | 系统正式上线 | 15d | 2027-02-15 | 2027-03-05 | 61 | waiting |
| 67 | 10 | **越南** | 90d | 2026-12-28 | 2027-04-30 |  | waiting |
| 68 | 10.1 | 越南设备准备 | 30d | 2027-01-11 | 2027-02-19 |  | waiting |
| 69 | 10.2 | 越南版本准备 | 40d | 2026-12-28 | 2027-02-19 |  | waiting |
| 70 | 10.3 | **试运行** | 35d | 2027-02-22 | 2027-04-09 |  | waiting |
| 71 | 10.3.1 | 现场设备硬件确认 | 5d | 2027-02-22 | 2027-02-26 |  | waiting |
| 72 | 10.3.2 | 试运行环境搭建 | 5d | 2027-02-22 | 2027-02-26 |  | waiting |
| 73 | 10.3.3 | 试运行数据准备 | 5d | 2027-03-01 | 2027-03-05 | 72 | waiting |
| 74 | 10.3.4 | 系统动员会 | 1d | 2027-03-05 | 2027-03-05 |  | waiting |
| 75 | 10.3.5 | 系统培训 | 5d | 2027-03-08 | 2027-03-12 | 73, 74 | waiting |
| 76 | 10.3.6 | 系统试运行 | 20d | 2027-03-15 | 2027-04-09 | 75 | waiting |
| 77 | 10.3.7 | 系统针对性优化 | 20d | 2027-03-15 | 2027-04-09 |  | waiting |

| ID | WBS | Task | Duration | Start | Finish | Status |
| --- | --- | --- | --- | --- | --- | --- |
| 78 | 10.4 | **系统上线** | 25d | 2027-03-29 | 2027-04-30 | waiting |
| 79 | 10.4.1 | 正式环境部署 | 5d | 2027-03-29 | 2027-04-02 | waiting |
| 80 | 10.4.2 | 正式环境数据准备 | 10d | 2027-03-29 | 2027-04-09 | waiting |
| 81 | 10.4.3 | 系统上线 | 15d | 2027-04-12 | 2027-04-30 | waiting |
| 82 | 11 | 安福二期 | 1d | 2027-05-10 | 2027-05-10 | waiting |
